Schedule from MS Project, 2015-02-04 to 2015-07-17, A marks actual dates.

## Calendars

- 标准: Mon-Fri 08:00-12:00, 13:00-17:00; Sat-Sun off.

## Schedule

| ID | WBS | Task | Duration | Start | Finish | Predecessors | Complete | Remaining | Total slack | Free slack | Constraint |
| --- | --- | --- | --- | --- | --- | --- | --- | --- | --- | --- | --- |
| 1 | 1 | **MCU platform项目计划** | 118d? | 2015-02-04 A | 2015-07-17 |  | 2% | 115.82d? | 0d |  |  |
| 2 | 1.1 | **app开发计划** | 118d? | 2015-02-04 A | 2015-07-17 |  | 2% | 115.3d? | 0d |  |  |
| 3 | 1.1.1 | 需求分析 | 3d? | 2015-02-04 A | 2015-02-08 |  | 90% | 0.3d? | 0d |  | finish no earlier than 2015-02-08 |
| 4 | 1.1.2 | 概要设计 | 5d? | 2015-02-09 | 2015-02-13 | 3 |  |  | 0d |  |  |
| 5 | 1.1.3 | **详细设计** | 20d? | 2015-02-16 | 2015-03-13 | 4 |  |  | 0d |  |  |
| 6 | 1.1.3.1 | 系统详细设计 | 8d? | 2015-02-16 | 2015-02-25 | 4 |  |  | 0d |  |  |
| 7 | 1.1.3.2 | 串口模块详细设计 | 6d? | 2015-02-26 | 2015-03-05 | 6 |  |  | 0d |  |  |
| 8 | 1.1.3.3 | 收音机/DSP详细设计 | 6d? | 2015-03-06 | 2015-03-13 | 7 |  |  | 0d |  |  |
| 9 | 1.1.4 | 编码 | 10d? | 2015-03-16 | 2015-03-27 | 8 |  |  | 0d |  |  |
| 10 | 1.1.5 | 调试/单元/集成/系统测试 | 21d | 2015-03-30 | 2015-04-27 | 9 |  |  | 0d |  |  |
| 11 | 1.1.6 | 功能测试/bug修改 | 59d | 2015-04-28 | 2015-07-17 | 10 |  |  | 0d |  |  |
| 12 | 1.2 | **自编程boot开发计划** | 28d? | 2015-04-13 | 2015-05-20 |  |  |  | 42d |  |  |
| 13 | 1.2.1 | 需求分析 | 1d? | 2015-04-13 | 2015-04-13 |  |  |  | 42d | 0d | start no earlier than 2015-04-13 |
| 14 | 1.2.2 | 概要设计 | 3d? | 2015-04-14 | 2015-04-16 | 13 |  |  | 42d | 0d |  |
| 15 | 1.2.3 | 详细设计 | 5d? | 2015-04-17 | 2015-04-23 | 14 |  |  | 42d | 0d |  |
| 16 | 1.2.4 | 编码 | 3d? | 2015-04-24 | 2015-04-28 | 15 |  |  | 42d | 0d |  |
| 17 | 1.2.5 | 单元/集成/系统测试 | 16d? | 2015-04-29 | 2015-05-20 | 16 |  |  | 42d |  |  |

Notes:
- 2: 项目风险点: / 1.串口协议不明确，与核心板联合调试可能会有大量时间花在协议的确定，导致项目延期； / 解决方案：1.前期使用长安方案的SPI调试协议以及操作流程； / 2.在与索菱等合作方联合调试时确认串口协议以及操作流程的各种问题，及时更新协议以及流程图；/ 2.收音机性能调试导致项目延期：收音机性能调试需要软件硬件联合调试，确定确切方案； / 解决方案：需要硬件联合供应商调节好收音机参数更新到我们的项目中去； / 3.TEF6638 DSP调试， 对6638 IC熟悉程度可能导致调试时间延长； / 解决方案：供应商提供参考操作代码可以缩短开发时间。
- 3: 确认系统大致功能，并考虑后续平台服用及扩展
- 4: 系统架构设计； / 确认系统属性及行为； / 制定系统各模块之间通信方式；
- 6: 系统启动流程； / 系统进出低功耗流程； / 数据掉电记忆存取流程； / can消息转发流程； / 诊断结构设计； / debug方式设计。 / 等等
- 7: 串口模块主要负责与核心板交互功能；
- 9: 由于对于NEC编译环境不熟悉可能导致第一次编码时间稍微延长
- 10: 先使用长安方案的SPI进行前期功能调试，防止串口调试导致项目延时
- 12: 项目风险点： / 1.自编程方式：V850自编程方式有以下三种: / a.使用V850 boot swap功能实现应用与boot的同时更新；(本来倾向使用这种方式，但供应商消息，在好帮手使用这种方式出现无法解决问题，怀疑为MCU自身缺陷)/ b.固定boot,只更新应用，不使用v850的boot swap功能;此方法需要添加向量表跳转功能，会导致中断稍微延时，但不会影响中断正常功能； / c.使用boot+app备份功能，此方案会占用一般FLASH作为备份区，会浪费一般flash空间。另关键此方案还得使用boot swap功能。 / 所有最终选择b方案进行自编程。 / 2.选择b方案缺陷必须要功能稳定，应为此方案无法更新boot。所以前期的自编程测试需要充分，防止后期boot问题导致MCU无法在线更新。 / 解决方案：制定自动测试方案对在线编程进行测试。制作自动测试android app烧写后读出flash数据与源数据进行比对。
